# 软件开发

Schedule from MS Project, 2017-07-01 to 2017-07-31, status date 2017-07-07, A marks actual dates.

## Calendars

- 标准: Mon-Fri 08:00-12:00, 13:00-17:00; Sat-Sun off.

## Resources

| Resource |
| --- |
| 项目经理/PM |
| 设计经理/DM |
| 技术经理/TM |
| 开发经理/DEV |
| APP开发经理/APP_DEV |
| 测试经理/TestM |

## Schedule

| ID | WBS | Task | Type | Duration | Start | Finish | Predecessors | Complete | Remaining | Total slack | Free slack | Constraint | Resources | Work | Actual work | 负责人/交付人 | 输入 | 输出 |
| --- | --- | --- | --- | --- | --- | --- | --- | --- | --- | --- | --- | --- | --- | --- | --- | --- | --- | --- |
| 1 | 1 | **项目启动** |  | 5d | 2017-07-01 A | 2017-07-07 A |  | 100% |  |  |  |  |  | 64h | 64h | 项目经理/PM |  |  |
| 2 | 1.1 | 明确开发目的 |  | 2d | 2017-07-01 A | 2017-07-04 A |  | 100% |  |  |  |  | 项目经理/PM | 16h | 16h |  | 项目要求/大赛说明 | 开发预估 |
| 3 | 1.2 | 小组人员确定和制定管理办法 |  | 2d | 2017-07-02 A | 2017-07-04 A |  | 100% |  |  |  |  | 项目经理/PM | 16h | 16h |  |  | 小组成员名单及分工 |
| 4 | 1.3 | 小组第一次会议 |  | 2d | 2017-07-03 A | 2017-07-06 A | 3 | 100% |  |  |  |  |  |  |  |  | 小组成员名单及分工 | 项目初步解决思路/明确开发目的 |
| 5 | 1.4 | 分析可行性 |  | 1d | 2017-07-07 A | 2017-07-07 A | 4 | 100% |  |  |  |  | 技术经理/TM | 8h | 8h |  | 项目初步解决思路 | 项目可行性计划[Draft] |
| 6 | 1.5 | 确定功能点 |  | 1d | 2017-07-05 A | 2017-07-05 A | 2 | 100% |  |  |  |  | 开发经理/DEV; 设计经理/DM | 16h | 16h |  |  |  |
| 7 | 1.6 | 选择开发语言、工具 |  | 1d | 2017-07-07 A | 2017-07-07 A | 4 | 100% |  |  |  |  | 技术经理/TM | 8h | 8h |  |  |  |
| 8 | 1.7 | 启动阶段结束 | milestone | 0d | 2017-07-07 A | 2017-07-07 A |  | 100% |  |  |  | start no earlier than 2017-07-07 |  |  |  |  | 项目可行性计划[Draft] | 项目可行性计划 |
| 9 | 2 | **项目规划** |  | 5d | 2017-07-02 A | 2017-07-07 A |  | 100% |  |  |  |  |  | 64h | 64h | 项目经理/PM |  |  |
| 10 | 2.1 | 确定项目计划及需求 |  | 8h | 2017-07-03 A | 2017-07-03 A |  | 100% |  |  |  |  | 项目经理/PM | 8h | 8h |  | 项目要求/大赛说明 | 项目范围和需求定义 |
| 11 | 2.2 | 组织管理细则 |  | 1d | 2017-07-02 A | 2017-07-03 A |  | 100% |  |  |  | start no earlier than 2017-04-11 | 项目经理/PM | 8h | 8h |  |  | 组内规范/组内公约 |
| 12 | 2.3 | 沟通管理细则 | manual | 1d | 2017-07-05 A | 2017-07-05 A | 11 | 100% |  |  |  | start no earlier than 2017-07-05 | 项目经理/PM | 8h | 8h |  |  | 沟通细则 |
| 13 | 2.4 | 配置管理细则 |  | 1d | 2017-07-06 A | 2017-07-06 A | 12 | 100% |  |  |  | start no earlier than 2016-11-02 | 技术经理/TM; 开发经理/DEV | 16h | 16h |  |  | 配置管理细则 |
| 14 | 2.5 | 过程质量保证管理细则 |  | 1d | 2017-07-07 A | 2017-07-07 A | 13 | 100% |  |  |  | start no earlier than 2016-11-02 | 测试经理/TestM; 技术经理/TM; 项目经理/PM | 24h | 24h |  |  | QA细则 |
| 15 | 2.6 | 明确开发难点 | milestone | 0d | 2017-07-06 A | 2017-07-06 A |  | 100% |  |  |  | start no earlier than 2017-04-14 | 技术经理/TM |  |  |  |  |  |
| 16 | 2.7 | 项目规划完成 | milestone | 0d | 2017-07-06 A | 2017-07-06 A | 15 | 100% |  |  |  | finish no earlier than 2017-04-14 |  |  |  |  |  | 组织管理方案与业务分析方案 |
| 17 | 3 | **界面设计** |  | 6d | 2017-07-07 A | 2017-07-14 |  | 17% | 5d |  |  |  |  | 128h | 16h | 设计经理/DM |  |  |
| 18 | 3.1 | **Web端界面设计** |  | 6d | 2017-07-07 A | 2017-07-14 |  | 17% | 5d | 11d |  |  |  | 72h | 8h |  |  |  |
| 19 | 3.1.1 | 明确设计目的 |  | 1d | 2017-07-07 A | 2017-07-07 A |  | 100% |  |  |  |  | 设计经理/DM | 8h | 8h |  | 项目要求/大赛说明 | 设计目的 |
| 20 | 3.1.2 | 确定设计功能点 |  | 2d | 2017-07-10 | 2017-07-11 | 19 |  |  | 11d | 0d |  | 技术经理/TM; 设计经理/DM | 32h |  |  | 项目要求/大赛说明 | 设计功能点 |
| 21 | 3.1.3 | 明确页面数目 |  | 1d | 2017-07-12 | 2017-07-12 | 20 |  |  | 11d | 0d |  | 设计经理/DM | 8h |  |  |  |  |
| 22 | 3.1.4 | 页面元素设计 |  | 1d | 2017-07-13 | 2017-07-13 | 21 |  |  | 11d | 0d |  | 设计经理/DM | 8h |  |  |  | 初版设计 |
| 23 | 3.1.5 | 根据反馈修改功能点 |  | 1d | 2017-07-14 | 2017-07-14 | 22 |  |  | 11d |  |  | 开发经理/DEV; 设计经理/DM | 16h |  |  | 初版设计 | 修改版设计 |
| 24 | 3.1.6 | Web端设计工作完成 | milestone | 0d | 2017-07-14 | 2017-07-14 |  |  |  | 12d |  | start no earlier than 2017-07-14 |  |  |  |  | 修改版设计 | 完整设计 |

| ID | WBS | Task | Type | Duration | Start | Finish | Predecessors | Complete | Remaining | Total slack | Free slack | Constraint | Resources | Work | Actual work | 负责人/交付人 | 输入 | 输出 |
| --- | --- | --- | --- | --- | --- | --- | --- | --- | --- | --- | --- | --- | --- | --- | --- | --- | --- | --- |
| 25 | 3.2 | **手机（微信）端界面设计** |  | 6d | 2017-07-07 A | 2017-07-14 |  | 17% | 5d |  |  |  |  | 56h | 8h |  |  |  |
| 26 | 3.2.1 | 明确设计目的 |  | 1d | 2017-07-07 A | 2017-07-07 A |  | 100% |  |  |  |  | 设计经理/DM | 8h | 8h |  |  |  |
| 27 | 3.2.2 | 确定设计功能点 |  | 1d | 2017-07-10 | 2017-07-10 | 26 |  |  | 11d | 0d |  | APP开发经理/APP_DEV; 设计经理/DM | 16h |  |  |  |  |
| 28 | 3.2.3 | 明确页面数目 |  | 1d | 2017-07-11 | 2017-07-11 | 27 |  |  | 11d | 0d |  | 设计经理/DM | 8h |  |  |  |  |
| 29 | 3.2.4 | 页面元素设计 |  | 1d | 2017-07-12 | 2017-07-12 | 28 |  |  | 11d | 0d |  | 设计经理/DM | 8h |  |  |  |  |
| 30 | 3.2.5 | 根据反馈修改功能点 |  | 1d | 2017-07-13 | 2017-07-13 | 29 |  |  | 11d | 0d |  | APP开发经理/APP_DEV; 设计经理/DM | 16h |  |  |  |  |
| 31 | 3.2.6 | 手机（微信）端设计工作完成 |  | 1d | 2017-07-14 | 2017-07-14 | 30 |  |  | 11d |  |  |  |  |  |  |  |  |
| 32 | 4 | 小组第二次会议 | milestone | 0d | 2017-07-14 | 2017-07-14 |  |  |  | 12d |  | start no earlier than 2017-07-14 |  |  |  |  |  |  |
| 33 | 5 | **开发** |  | 14d | 2017-07-07 A | 2017-07-26 |  | 19% | 11.35d |  |  |  |  | 312h | 56h | 项目经理/PM |  |  |
| 34 | 5.1 | **Web端和手机（微信）端前端开发** |  | 11d | 2017-07-10 A | 2017-07-24 |  | 11% | 9.78d | 5d |  |  |  | 88h | 8h | APP开发经理/APP_DEV |  |  |
| 35 | 5.1.1 | 页面框架搭建 |  | 1d | 2017-07-10 A | 2017-07-10 |  | 99% | 0d | 7d | 0d |  | 设计经理/DM; APP开发经理/APP_DEV | 8h | 8h |  | 完整设计 |  |
| 36 | 5.1.2 | 数据本地储存模块开发 |  | 1d | 2017-07-11 | 2017-07-11 | 35 |  |  | 7d | 0d |  | 开发经理/DEV | 8h |  |  | 完整设计 |  |
| 37 | 5.1.3 | 数据本地获取模块开发 |  | 1d | 2017-07-12 | 2017-07-12 | 36 |  |  | 7d | 0d |  | 开发经理/DEV | 8h |  |  | 完整设计 |  |
| 38 | 5.1.4 | 设计引擎模块、桩模块，白盒测试 | milestone | 0d | 2017-07-12 A | 2017-07-12 | 37 | 99% | 0d | 7d | 0d |  | 测试经理/TestM |  |  |  | 完整设计 |  |
| 39 | 5.1.5 | 页面元素添加 |  | 1d | 2017-07-13 | 2017-07-13 | 38 |  |  | 7d | 0d |  | 设计经理/DM | 8h |  |  | 完整设计 |  |
| 40 | 5.1.6 | 多页面数据传递与跳转 | milestone | 0d | 2017-07-13 A | 2017-07-13 | 39 | 99% | 0d | 7d | 0d |  | 开发经理/DEV |  |  |  | 完整设计 |  |
| 41 | 5.1.7 | 登录页面设计 |  | 1d | 2017-07-14 | 2017-07-14 | 40 |  |  | 7d | 0d |  | 设计经理/DM | 8h |  |  | 完整设计 |  |
| 42 | 5.1.8 | 前后端初步整合 | milestone | 0d | 2017-07-14 A | 2017-07-14 | 41 | 99% | 0d | 7d | 0d |  | 设计经理/DM; APP开发经理/APP_DEV; 技术经理/TM |  |  |  |  | 整合沟通 |
| 43 | 5.1.9 | 拆除桩模块、引擎模块，尝试获取后端数据 |  | 1d | 2017-07-17 | 2017-07-17 | 42 |  |  | 7d | 0d |  | 测试经理/TestM | 8h |  |  |  |  |
| 44 | 5.1.10 | 服务器数据获取模块开发，白盒测试 | milestone | 0d | 2017-07-14 A | 2017-07-17 | 43 | 99% | 0d | 7d | 0d |  | 测试经理/TestM |  |  |  | 完整设计 |  |
| 45 | 5.1.11 | 用户类型分配模块开发 |  | 1d | 2017-07-18 | 2017-07-18 | 44 |  |  | 7d | 0d |  | 开发经理/DEV | 8h |  |  | 完整设计 |  |
| 46 | 5.1.12 | 管理员界面模块、元素整合，白盒测试 |  | 1d | 2017-07-19 | 2017-07-19 | 45 |  |  | 7d | 1d |  | 测试经理/TestM; 开发经理/DEV | 16h |  |  | 完整设计 |  |
| 47 | 5.1.13 | 前后端整合 | milestone | 0d | 2017-07-21 A | 2017-07-21 | 46 | 99% | 0d | 5d | 0d |  | APP开发经理/APP_DEV; 测试经理/TestM; 开发经理/DEV |  |  |  |  | 整合沟通 |
| 48 | 5.1.14 | 功能测试 |  | 1d | 2017-07-24 | 2017-07-24 | 47 |  |  | 5d | 0d |  | 测试经理/TestM; 技术经理/TM | 16h |  |  | 完整设计 | 测试结果报告 |
| 49 | 5.1.15 | 前端开发完成 | milestone | 0d | 2017-07-24 | 2017-07-24 | 48 |  |  | 5d |  |  |  |  |  |  |  | 前端结果报告 |

| ID | WBS | Task | Type | Duration | Start | Finish | Predecessors | Complete | Remaining | Total slack | Free slack | Constraint | Resources | Work | Actual work | 负责人/交付人 | 输入 | 输出 |
| --- | --- | --- | --- | --- | --- | --- | --- | --- | --- | --- | --- | --- | --- | --- | --- | --- | --- | --- |
| 50 | 5.2 | **后端开发** |  | 13d | 2017-07-07 A | 2017-07-25 |  | 21% | 10.21d | 4d |  |  |  | 224h | 48h | 技术经理/TM |  |  |
| 51 | 5.2.1 | **Web端后端开发** |  | 13d | 2017-07-07 A | 2017-07-25 |  | 25% | 9.75d | 4d |  |  |  | 128h | 32h | 开发经理/DEV |  |  |
| 52 | 5.2.1.1 | 搭建SSH框架 |  | 5d | 2017-07-07 A | 2017-07-13 |  | 20% | 4d | 0d |  |  | 开发经理/DEV | 40h | 8h |  | 完整设计 |  |
| 53 | 5.2.1.2 | 构造数据字典 |  | 2d | 2017-07-14 | 2017-07-17 | 52 |  |  | 0d |  |  | 开发经理/DEV | 16h |  |  |  | 数据字典 |
| 54 | 5.2.1.3 | E-R图（实体-联系图） |  | 2d | 2017-07-18 | 2017-07-19 | 53 |  |  | 0d |  |  | 开发经理/DEV | 16h |  |  |  | ER图 |
| 55 | 5.2.1.4 | 构造数据库 |  | 2d | 2017-07-20 | 2017-07-21 | 54 |  |  | 0d |  |  | 开发经理/DEV | 16h |  |  |  |  |
| 56 | 5.2.1.5 | 处理数据库映射以及请求操作 |  | 5d | 2017-07-18 A | 2017-07-25 | 55 | 60% | 2d | 4d | 0d |  | 开发经理/DEV | 40h | 24h |  |  |  |
| 57 | 5.2.1.6 | 后端开发完成 | milestone | 0d | 2017-07-25 | 2017-07-25 | 56 |  |  | 4d |  |  |  |  |  |  |  | 后端结果报告 |
| 58 | 5.2.2 | **手机（微信）端后端开发** |  | 11d | 2017-07-10 A | 2017-07-24 |  | 17% | 9.17d | 5d |  |  |  | 96h | 16h | APP开发经理/APP_DEV |  |  |
| 59 | 5.2.2.1 | 手机（微信）端数据库映射以及请求操作 |  | 6d | 2017-07-10 A | 2017-07-17 |  | 17% | 5d | 10d |  |  | APP开发经理/APP_DEV | 48h | 8h |  |  |  |
| 60 | 5.2.2.2 | 手机（微信）端消息推送、接受连接处理 |  | 6d | 2017-07-16 A | 2017-07-24 |  | 17% | 5d | 5d |  |  | APP开发经理/APP_DEV | 48h | 8h |  |  |  |
| 61 | 6 | 小组第三次会议 | milestone | 0d | 2017-07-24 | 2017-07-24 |  |  |  | 6d |  | start no earlier than 2017-07-24 |  |  |  |  |  |  |
| 62 | 7 | **测试** |  | 14d | 2017-07-07 A | 2017-07-26 |  | 13% | 12.25d |  |  |  |  | 192h | 32h | 测试经理/TestM |  |  |
| 63 | 7.1 | **单元测试** |  | 11d | 2017-07-07 A | 2017-07-21 |  | 9% | 10d | 6d |  |  |  | 128h | 16h |  | 前后端 |  |
| 64 | 7.1.1 | 审阅模块化代码 |  | 2d | 2017-07-07 A | 2017-07-10 |  | 50% | 1d | 6d | 0d |  | APP开发经理/APP_DEV; 开发经理/DEV | 32h | 16h |  |  |  |
| 65 | 7.1.2 | 测试组件模块是否符合产品规范 |  | 1d | 2017-07-11 | 2017-07-11 | 64 |  |  | 6d | 0d |  | 测试经理/TestM | 8h |  |  |  |  |
| 66 | 7.1.3 | 找出不符合产品规范的异常情况 |  | 3d | 2017-07-12 | 2017-07-14 | 65 |  |  | 6d | 0d |  | 测试经理/TestM | 24h |  |  |  |  |
| 67 | 7.1.4 | 修改代码 |  | 3d | 2017-07-17 | 2017-07-19 | 66 |  |  | 6d | 0d |  | APP开发经理/APP_DEV; 开发经理/DEV | 48h |  |  |  |  |
| 68 | 7.1.5 | 重新测试经过修改的代码 |  | 2d | 2017-07-20 | 2017-07-21 | 67 |  |  | 6d | 0d |  | 测试经理/TestM | 16h |  |  |  |  |
| 69 | 7.1.6 | 单元测试完成 | milestone | 0d | 2017-07-21 | 2017-07-21 | 68 |  |  | 6d |  |  |  |  |  |  |  | 单元测试结果报告 |
| 70 | 7.1.7 | 小组第四次会议 | milestone | 0d | 2017-07-21 | 2017-07-21 |  |  |  | 0d |  | start no earlier than 2017-07-21 |  |  |  |  |  |  |
| 71 | 7.2 | **整体测试** |  | 4d | 2017-07-21 A | 2017-07-26 |  | 20% | 3.2d | 3d |  |  |  | 64h | 16h | 测试经理/TestM | 单元测试结果报告 | 整合测试结果报告 |
| 72 | 7.2.1 | 测试模块集成情况 |  | 1d | 2017-07-21 | 2017-07-21 | 70 |  |  | 0d |  |  | 技术经理/TM | 8h |  |  |  |  |
| 73 | 7.2.2 | 找出不符合规范的异常情况 |  | 1d | 2017-07-24 | 2017-07-24 | 72 |  |  | 0d |  |  | 测试经理/TestM | 8h |  |  |  |  |
| 74 | 7.2.3 | 修改代码 |  | 1d | 2017-07-25 | 2017-07-25 | 73 |  |  | 0d |  |  | APP开发经理/APP_DEV; 开发经理/DEV | 16h |  |  |  |  |
| 75 | 7.2.4 | 重新测试经过修改的代码 |  | 2d | 2017-07-21 A | 2017-07-26 | 74 | 50% | 1d | 3d | 0d |  | 测试经理/TestM; 技术经理/TM | 32h | 16h |  |  |  |
| 76 | 7.2.5 | 整体测试完成 | milestone | 0d | 2017-07-26 | 2017-07-26 | 75 |  |  | 3d |  |  |  |  |  |  |  | 整合测试结果报告 |

| ID | WBS | Task | Type | Duration | Start | Finish | Predecessors | Total slack | Free slack | Resources | Work | 负责人/交付人 | 输出 |
| --- | --- | --- | --- | --- | --- | --- | --- | --- | --- | --- | --- | --- | --- |
| 77 | 8 | **项目结束回顾** |  | 4d | 2017-07-26 | 2017-07-31 |  |  |  |  | 24h | 项目经理/PM |  |
| 78 | 8.1 | 设计答辩文档 |  | 1d | 2017-07-26 | 2017-07-26 |  | 1d | 0d | 项目经理/PM | 8h |  |  |
| 79 | 8.2 | 回顾完成 |  | 1d | 2017-07-27 | 2017-07-27 | 78 | 1d | 0d | 项目经理/PM | 8h |  |  |
| 80 | 8.3 | 项目结尾回顾完成 |  | 1d | 2017-07-28 | 2017-07-28 | 79 | 1d |  | 项目经理/PM | 8h |  | 回顾整个过程感想 |
| 81 | 8.4 | 小组第五次会议 | milestone | 0d | 2017-07-26 | 2017-07-26 |  | 4d |  |  |  |  |  |
